# Proyecto Trascendental

Schedule from MS Project, 2020-11-09 to 2021-03-02, costs in $, A marks actual dates.

## Calendars

- Calendario Trascendental: Mon-Fri 06:00-12:00, 13:00-18:00; Sat-Sun off. Exceptions (off unless hours are given): 2020-11-16 (Independencia de Cartagena), 2020-12-08 (Día de la Inmaculada Concepción), 2020-12-15 to 2021-01-25 (Vacaciones).

## Resources

| Resource | Rate | Notes |
| --- | --- | --- |
| Laura Tatiana Gómez Castillo | 5750 |  |
| Lady Daniela Díaz Sánchez | 5750 |  |
| Yáxul Santiago Cárdenas Hincapié | 5750 |  |
| Brayan Gómez López | 5750 |  |
| Paulo Sebastian Correa Espinosa | 5750 |  |
| Computador | 5000 | la garantia del computador es de aproximadamente 2 años / el costo total de 1.800.000 |
| Internet | 1000 | El costo total es de 70000 |
| Escritorio | 1400 | La garantia es de 6 meses y con valor de 250000 |
| Silla | 900 | La garantia es de 6 meses, valor del mueble 150000 |
| Servicio de Luz |  |  |

## Schedule

| ID | WBS | Task | Type | Duration | Start | Finish | Predecessors | Complete | Remaining | Baseline start | Baseline finish | Baseline duration | Total slack | Free slack | Constraint | Resources | Work | Actual work | Cost | Baseline cost | Actual cost |
| --- | --- | --- | --- | --- | --- | --- | --- | --- | --- | --- | --- | --- | --- | --- | --- | --- | --- | --- | --- | --- | --- |
| 1 | 1 | **Proyecto Trascendental** |  | 67.75d | 2020-11-09 A | 2021-03-02 |  | 52% | 32.76d | 2020-11-09 | 2020-12-10 | 28.75d | 0d |  |  |  | 765h | 675h | 4,728,178.57 | 36,454,878.57 | 3,976,478.57 |
| 2 | 1.1 | **Análisis** |  | 4.5d | 2020-11-09 A | 2020-11-12 |  | 97% | 0.12d | 2020-11-09 | 2020-11-12 | 4.5d | 63.25d |  |  |  | 102h | 100h | 725,900 | 13,527,000 | 591,200 |
| 3 | 1.1.1 | **Componente Metodológico** |  | 4.38d | 2020-11-09 A | 2020-11-12 |  | 95% | 0.22d | 2020-11-09 | 2020-11-11 | 2.62d | 63.38d |  |  |  | 36h | 35h | 261,300 | 8,031,250 | 211,150 |
| 4 | 1.1.1.1 | INICIO | milestone | 0d | 2020-11-09 | 2020-11-09 |  |  |  | 2020-11-09 | 2020-11-09 | 0d | 0.12d | 0d |  |  |  |  |  |  |  |
| 5 | 1.1.1.2 | Nombre del proyecto |  | 2h | 2020-11-09 A | 2020-11-09 | 4 | 50% | 1h | 2020-11-09 | 2020-11-09 | 1h | 67.5d | 0d |  | Yáxul Santiago Cárdenas Hincapié; Computador; Escritorio; Internet; Silla [200%] | 2h | 1h | 20,700 | 1,310,750 | 7,550 |
| 6 | 1.1.1.3 | Objetivo general |  | 3h | 2020-11-09 A | 2020-11-09 | 5SS | 99% | 0h | 2020-11-09 | 2020-11-09 | 3h | 1d | 0.62d |  | Laura Tatiana Gómez Castillo; Lady Daniela Díaz Sánchez; Computador; Escritorio; Internet; Silla [200%] | 6h | 6h | 43,700 | 1,339,500 | 36,300 |
| 7 | 1.1.1.4 | Objetivos específicos |  | 2h | 2020-11-10 A | 2020-11-10 | 6 | 99% | 0h | 2020-11-10 | 2020-11-10 | 2h | 66.12d | 0d |  | Paulo Sebastian Correa Espinosa; Computador; Escritorio; Internet; Silla | 2h | 2h | 19,800 | 1,316,500 | 12,400 |
| 8 | 1.1.1.5 | Planteamiento del problema |  | 5h | 2020-11-10 A | 2020-11-10 | 7SS | 99% | 0h | 2020-11-10 | 2020-11-10 | 5h | 1.75d | 0d |  | Lady Daniela Díaz Sánchez; Laura Tatiana Gómez Castillo; Yáxul Santiago Cárdenas Hincapié; Computador; Escritorio; Internet; Silla [300%] | 15h | 15h | 96,350 | 1,391,250 | 88,950 |
| 9 | 1.1.1.6 | Alcance del proyecto |  | 3h | 2020-11-10 A | 2020-11-12 | 8 | 99% | 0h | 2020-11-10 | 2020-11-10 | 3h | 63.38d | 0d |  | Yáxul Santiago Cárdenas Hincapié; Brayan Gómez López; Computador; Escritorio; Internet; Silla [200%] | 6h | 6h | 43,700 | 1,339,500 | 36,300 |
| 10 | 1.1.1.7 | Justificación |  | 5h | 2020-11-10 A | 2020-11-11 | 9SS | 99% | 0h | 2020-11-10 | 2020-11-11 | 5h | 65.12d | 0d |  | Laura Tatiana Gómez Castillo; Computador; Escritorio; Internet; Silla | 5h | 5h | 37,050 | 1,333,750 | 29,650 |
| 11 | 1.1.2 | **Logo** |  | 0.25d | 2020-11-10 A | 2020-11-10 |  | 50% | 0.12d | 2020-11-10 | 2020-11-10 | 0.12d | 1d |  |  |  | 2h | 1h | 20,700 | 1,310,750 | 7,550 |
| 12 | 1.1.2.1 | Definición de color y estilo |  | 2h | 2020-11-10 A | 2020-11-10 | 10SS | 50% | 1h | 2020-11-10 | 2020-11-10 | 1h | 1d | 0d |  | Yáxul Santiago Cárdenas Hincapié; Computador; Escritorio; Internet; Silla [200%] | 2h | 1h | 20,700 | 1,310,750 | 7,550 |
| 13 | 1.1.3 | **Levantamiento de información** |  | 2.25d | 2020-11-10 A | 2020-11-12 |  | 99% | 0d | 2020-11-10 | 2020-11-12 | 2.25d | 63.25d |  |  |  | 64h | 64h | 443,900 | 4,185,000 | 372,500 |
| 14 | 1.1.3.1 | Entrevistas |  | 1d | 2020-11-10 A | 2020-11-11 | 12 | 99% | 0d | 2020-11-10 | 2020-11-11 | 1d | 64.5d | 0d |  | Lady Daniela Díaz Sánchez; Computador; Escritorio; Internet; Silla | 8h | 8h | 54,300 | 1,351,000 | 46,900 |
| 15 | 1.1.3.2 | Personal Operativo |  | 2d | 2020-11-10 A | 2020-11-12 | 14SS | 99% | 0d | 2020-11-10 | 2020-11-12 | 2d | 63.5d | 0d |  | Lady Daniela Díaz Sánchez; Computador; Escritorio; Internet; Silla [200%] | 16h | 16h | 101,200 | 1,397,000 | 93,800 |
| 16 | 1.1.3.3 | Encuestas |  | 1d | 2020-11-10 A | 2020-11-11 | 15SS | 99% | 0d | 2020-11-10 | 2020-11-11 | 1d | 64.5d | 0d |  | Laura Tatiana Gómez Castillo; Yáxul Santiago Cárdenas Hincapié; Computador; Escritorio; Internet; Silla [200%] | 16h | 16h | 101,200 | 1,397,000 | 93,800 |
| 17 | 1.1.3.4 | Personal Administrativo |  | 1.5d | 2020-11-10 A | 2020-11-11 | 16SS | 99% | 0d | 2020-11-10 | 2020-11-11 | 1.5d | 1.38d | 0d |  | Computador; Escritorio; Internet; Laura Tatiana Gómez Castillo; Silla [200%]; Yáxul Santiago Cárdenas Hincapié | 24h | 24h | 147,200 |  | 138,000 |
| 18 | 1.1.3.5 | **Reunión sustentación** |  | 0.75d | 2020-11-12 A | 2020-11-12 A |  | 100% |  | 2020-11-12 | 2020-11-12 | 0.75d |  |  |  |  |  |  |  |  |  |
| 19 | 1.1.3.5.1 | Reunión sustentación 1 |  | 6h | 2020-11-12 A | 2020-11-12 A | 17 | 100% |  | 2020-11-12 | 2020-11-12 | 6h |  |  | start no earlier than 2020-11-09 |  |  |  |  |  |  |
| 20 | 1.1.3.6 | FIN DEL ANALISIS | milestone | 0d | 2020-11-11 | 2020-11-11 | 17 |  |  | 2020-11-11 | 2020-11-11 | 0d | 64d | 0d |  | Servicio de Luz |  |  | 40,000 | 40,000 |  |
| 21 | 1.2 | **Planeación** |  | 64d | 2020-11-11 A | 2021-03-02 |  | 74% | 16.77d | 2020-11-11 | 2020-11-30 | 16.38d | 0d |  |  |  | 663h | 575h | 4,002,278.57 | 22,927,878.57 | 3,385,278.57 |
| 22 | 1.2.1 | **Mapa de procesos** |  | 2.12d | 2020-11-11 A | 2020-11-13 |  | 99% | 0d | 2020-11-11 | 2020-11-13 | 2d | 61.88d |  |  |  | 53h | 53h | 324,050 | 2,914,750 | 309,250 |
| 23 | 1.2.1.1 | INICIO | milestone | 0d | 2020-11-11 | 2020-11-11 | 20 |  |  | 2020-11-11 | 2020-11-11 | 0d | 64d |  |  |  |  |  |  |  |  |
| 24 | 1.2.1.2 | Mapa de procesos |  | 5h | 2020-11-12 A | 2020-11-13 | 17 | 99% | 0h | 2020-11-12 | 2020-11-12 | 5h | 61.88d | 0d |  | Laura Tatiana Gómez Castillo; Computador; Escritorio; Internet; Silla | 5h | 5h | 37,050 | 1,333,750 | 29,650 |
| 25 | 1.2.1.3 | Diagrama de flujo de proceso BPMN |  | 1.5d | 2020-11-12 A | 2020-11-13 | 24SS | 99% | 0d | 2020-11-12 | 2020-11-13 | 1.5d | 2d | 0d |  | Lady Daniela Díaz Sánchez; Laura Tatiana Gómez Castillo; Paulo Sebastian Correa Espinosa; Yáxul Santiago Cárdenas Hincapié; Computador; Escritorio; Internet; Silla [400%] | 48h | 48h | 287,000 | 1,581,000 | 279,600 |

Notes:
- 17: Personal Administrativo de la empresa Disser Ingenieria S.A.S.

| ID | WBS | Task | Type | Duration | Start | Finish | Predecessors | Complete | Remaining | Baseline start | Baseline finish | Baseline duration | Total slack | Free slack | Constraint | Resources | Work | Actual work | Cost | Baseline cost | Actual cost |
| --- | --- | --- | --- | --- | --- | --- | --- | --- | --- | --- | --- | --- | --- | --- | --- | --- | --- | --- | --- | --- | --- |
| 26 | 1.2.2 | **Informe de Requerimientos (Estándar IEEE 830)** |  | 5.12d | 2020-11-13 A | 2020-11-20 |  | 99% | 0d | 2020-11-13 | 2020-11-20 | 5d | 56.88d |  |  |  | 118h | 118h | 721,928.57 | 5,905,128.57 | 692,328.57 |
| 27 | 1.2.2.1 | Requerimientos funcionales |  | 2d | 2020-11-13 A | 2020-11-18 | 25 | 99% | 0d | 2020-11-13 | 2020-11-17 | 2d | 58.62d | 0d |  | Yáxul Santiago Cárdenas Hincapié; Laura Tatiana Gómez Castillo; Computador; Escritorio; Internet; Silla [200%] | 38h | 38h | 234,328.57 | 1,530,128.57 | 226,928.57 |
| 28 | 1.2.2.2 | Requerimientos No funcionales |  | 2d | 2020-11-13 A | 2020-11-17 | 27SS | 99% | 0d | 2020-11-13 | 2020-11-17 | 2d | 2d | 1d |  | Brayan Gómez López; Lady Daniela Díaz Sánchez; Computador; Escritorio; Internet; Silla [200%] | 32h | 32h | 193,200 | 1,489,000 | 185,800 |
| 29 | 1.2.2.3 | Especificaciones de casos de uso |  | 1d | 2020-11-18 A | 2020-11-19 | 28 | 99% | 0d | 2020-11-18 | 2020-11-19 | 1d | 57.88d | 0d |  | Lady Daniela Díaz Sánchez; Laura Tatiana Gómez Castillo; Computador; Escritorio; Internet; Silla [200%] | 16h | 16h | 101,200 | 1,397,000 | 93,800 |
| 30 | 1.2.2.4 | Formato de Caso de Uso Extendido |  | 2d | 2020-11-18 A | 2020-11-20 | 29SS | 99% | 0d | 2020-11-18 | 2020-11-20 | 2d | 56.88d |  |  | Brayan Gómez López; Yáxul Santiago Cárdenas Hincapié; Computador; Escritorio; Internet; Silla [200%] | 32h | 32h | 193,200 | 1,489,000 | 185,800 |
| 31 | 1.2.3 | **Versionamiento** |  | 5d | 2020-11-13 A | 2020-11-20 |  | 99% | 0d | 2020-11-13 | 2020-11-20 | 5d | 2d |  |  |  | 160h | 160h | 931,000 | 2,225,000 | 923,600 |
| 32 | 1.2.3.1 | GitHub |  | 5d | 2020-11-13 A | 2020-11-20 | 27SS | 99% | 0d | 2020-11-13 | 2020-11-20 | 5d | 2d | 0d |  | Brayan Gómez López; Lady Daniela Díaz Sánchez; Laura Tatiana Gómez Castillo; Yáxul Santiago Cárdenas Hincapié; Computador; Escritorio; Internet; Silla [400%] | 160h | 160h | 931,000 | 2,225,000 | 923,600 |
| 33 | 1.2.4 | **Modelo Entidad Relación** |  | 9.12d | 2020-11-20 A | 2020-11-30 |  | 99% | 0d | 2020-11-20 | 2020-11-24 | 3d | 47.88d |  |  |  | 64h | 64h | 395,600 | 4,283,000 | 373,400 |
| 34 | 1.2.4.1 | MER |  | 1d | 2020-11-20 A | 2020-11-24 | 32 | 99% | 0d | 2020-11-20 | 2020-11-20 | 1d | 2.88d | 0d |  | Brayan Gómez López; Computador; Escritorio; Internet; Silla | 8h | 8h | 54,300 | 1,351,000 | 46,900 |
| 35 | 1.2.4.2 | Modelo Relación |  | 2d | 2020-11-20 A | 2020-11-30 | 34 | 99% | 0d | 2020-11-20 | 2020-11-24 | 2d | 47.88d | 0d |  | Lady Daniela Díaz Sánchez; Laura Tatiana Gómez Castillo; Yáxul Santiago Cárdenas Hincapié; Computador; Escritorio; Internet; Silla [300%] | 48h | 48h | 286,100 | 1,581,000 | 278,700 |
| 36 | 1.2.4.3 | Diccionario de datos |  | 1d | 2020-11-20 A | 2020-11-23 | 35SS | 99% | 0d | 2020-11-20 | 2020-11-23 | 1d | 1.62d | 1d |  | Lady Daniela Díaz Sánchez; Laura Tatiana Gómez Castillo; Computador; Escritorio; Internet; Silla [200%] | 8h | 8h | 55,200 | 1,351,000 | 47,800 |
| 37 | 1.2.5 | **Diagramas UML** |  | 2.62d | 2020-11-24 A | 2020-11-26 |  | 99% | 0d | 2020-11-24 | 2020-11-25 | 1.25d | 51.38d |  |  |  | 20h | 20h | 133,400 | 2,725,000 | 118,600 |
| 38 | 1.2.5.1 | Diagrama de clases |  | 5h | 2020-11-24 A | 2020-11-24 | 36 | 99% | 0h | 2020-11-24 | 2020-11-24 | 5h | 0.88d | 0d |  | Brayan Gómez López; Yáxul Santiago Cárdenas Hincapié; Computador; Escritorio; Internet; Silla [200%] | 10h | 10h | 66,700 | 1,362,500 | 59,300 |
| 39 | 1.2.5.2 | Diagrama de despliegue |  | 5h | 2020-11-24 A | 2020-11-26 | 38 | 99% | 0h | 2020-11-24 | 2020-11-25 | 5h | 51.38d |  |  | Laura Tatiana Gómez Castillo; Yáxul Santiago Cárdenas Hincapié; Computador; Escritorio; Internet; Silla [200%] | 10h | 10h | 66,700 | 1,362,500 | 59,300 |
| 40 | 1.2.6 | **Prototipo no funcional** |  | 10d | 2020-11-13 A | 2020-11-25 |  | 50% | 5d | 2020-11-13 | 2020-11-20 | 5d | 52d |  |  |  | 230h | 150h | 1,342,700 | 3,472,500 | 867,900 |
| 41 | 1.2.6.1 | HTML |  | 10d | 2020-11-13 A | 2020-11-25 | 32SS | 50% | 5d | 2020-11-13 | 2020-11-20 | 5d | 52d | 0d |  | Lady Daniela Díaz Sánchez; Laura Tatiana Gómez Castillo; Computador; Escritorio; Internet; Silla [300%] | 111h | 71h | 648,350 | 1,713,250 | 410,950 |
| 42 | 1.2.6.2 | CSS |  | 10d | 2020-11-13 A | 2020-11-25 | 41SS | 50% | 5d | 2020-11-13 | 2020-11-20 | 5d | 2d | 0d |  | Brayan Gómez López; Yáxul Santiago Cárdenas Hincapié; Computador; Escritorio; Internet; Silla [300%] | 119h | 79h | 694,350 | 1,759,250 | 456,950 |
| 43 | 1.2.7 | **Diagrama de gantt** |  | 3d | 2020-11-25 A | 2020-11-27 |  | 67% | 1d | 2020-11-25 | 2020-11-27 | 2d | 0.62d |  |  |  |  |  |  |  |  |
| 44 | 1.2.7.1 | Project |  | 3d | 2020-11-25 A | 2020-11-27 | 42 | 67% | 1d | 2020-11-25 | 2020-11-27 | 2d | 0.62d | 0d |  |  |  |  |  |  |  |
| 45 | 1.2.8 | **Normalizacion** |  | 49d | 2020-11-27 A | 2021-03-02 |  | 56% | 21.78d | 2020-11-27 | 2020-11-30 | 0.62d | 0d |  |  |  | 18h | 10h | 113,600 | 1,362,500 | 60,200 |
| 46 | 1.2.8.1 | (1FN), (2FN), (3FN) |  | 9h | 2020-11-27 A | 2021-03-02 | 44 | 56% | 4h | 2020-11-27 | 2020-11-30 | 5h | 0d |  |  | Lady Daniela Díaz Sánchez; Laura Tatiana Gómez Castillo; Computador; Escritorio; Internet; Silla [300%] | 18h | 10h | 113,600 | 1,362,500 | 60,200 |
| 47 | 1.2.9 | **Reunión sustentación** |  | 0.75d | 2020-11-30 A | 2020-11-30 A |  | 100% |  | 2020-11-30 | 2020-11-30 | 0.75d |  |  |  |  |  |  | 40,000 | 40,000 | 40,000 |
| 48 | 1.2.9.1 | Reunión sustentación 1 |  | 3h | 2020-11-30 A | 2020-11-30 A | 46 | 100% |  | 2020-11-30 | 2020-11-30 | 3h |  |  | start no earlier than 2020-11-09 |  |  |  |  |  |  |
| 49 | 1.2.9.2 | FIN DE PLANEACION | milestone | 0d | 2020-11-30 A | 2020-11-30 A | 48 | 100% |  | 2020-11-30 | 2020-11-30 | 0d |  |  |  | Servicio de Luz |  |  | 40,000 | 40,000 | 40,000 |

| ID | WBS | Task | Type | Duration | Start | Finish | Predecessors | Baseline start | Baseline finish | Baseline duration | Total slack | Free slack |
| --- | --- | --- | --- | --- | --- | --- | --- | --- | --- | --- | --- | --- |
| 50 | 1.3 | **Ejecución** |  | 11.5d | 2020-11-30 | 2020-12-14 |  | 2020-11-09 | 2020-12-10 | 28.75d | 32.12d |  |
| 51 | 1.3.1 | **Base de Datos** |  | 3.12d | 2020-11-30 | 2020-12-03 |  | 2020-11-30 | 2020-12-03 | 3.12d | 32.12d |  |
| 52 | 1.3.1.1 | Construcción de la Base de Datos |  | 8h | 2020-11-30 | 2020-12-01 | 49 | 2020-11-30 | 2020-12-01 | 8h | 32.12d | 0d |
| 53 | 1.3.1.2 | Datos insertados en la Base de Datos |  | 1.5d | 2020-12-01 | 2020-12-02 | 52 | 2020-12-01 | 2020-12-02 | 1.5d | 32.12d | 0d |
| 54 | 1.3.1.3 | Consultas y Joins en la Base de Datos |  | 5h | 2020-12-02 | 2020-12-03 | 53 | 2020-12-02 | 2020-12-03 | 5h | 32.12d | 0d |
| 55 | 1.3.2 | **Codificación y manejo de CRUD** |  | 5.5d | 2020-12-03 | 2020-12-10 |  | 2020-12-03 | 2020-12-10 | 5.5d | 32.12d |  |
| 56 | 1.3.2.1 | Conexión base de datos |  | 1d | 2020-12-03 | 2020-12-03 | 54 | 2020-12-03 | 2020-12-03 | 1d | 32.12d | 0d |
| 57 | 1.3.2.2 | Crud funcional módulos del sistema |  | 1.5d | 2020-12-03 | 2020-12-04 | 56 | 2020-12-03 | 2020-12-04 | 1.5d | 32.12d | 0d |
| 58 | 1.3.2.3 | Caso de uso 001 |  | 1.5d | 2020-12-07 | 2020-12-09 | 57 | 2020-12-07 | 2020-12-09 | 1.5d | 32.12d | 0d |
| 59 | 1.3.2.4 | Caso de uso n.. |  | 1.5d | 2020-12-09 | 2020-12-10 | 58 | 2020-12-09 | 2020-12-10 | 1.5d | 32.12d | 0d |
| 60 | 1.3.3 | **PROTOTIPO NO FUNCIONAL FINAL** |  | 4d | 2020-12-09 | 2020-12-11 |  | 2020-11-09 | 2020-11-10 | 2d | 32.12d |  |
| 61 | 1.3.3.1 | Html |  | 2d | 2020-12-10 | 2020-12-11 | 59 | 2020-11-09 | 2020-11-10 | 2d | 37d |  |
| 62 | 1.3.3.2 | Css |  | 2d | 2020-12-09 | 2020-12-10 | 59SS | 2020-11-09 | 2020-11-10 | 2d | 32.12d | 0d |
| 63 | 1.3.3.3 | Javascript |  | 2d | 2020-12-10 | 2020-12-11 | 62 | 2020-11-09 | 2020-11-10 | 2d | 32.12d | 0d |
| 64 | 1.3.4 | **Project** |  | 0.38d | 2020-12-14 | 2020-12-14 |  | 2020-11-09 | 2020-11-09 | 0.38d | 32.12d |  |
| 65 | 1.3.4.1 | Informe de Costos |  | 3h | 2020-12-14 | 2020-12-14 | 63 | 2020-11-09 | 2020-11-09 | 3h | 32.12d | 0d |
| 66 | 1.3.4.2 | FIN DE EJECUCION | milestone | 0d | 2020-12-14 | 2020-12-14 | 65 | 2020-11-09 | 2020-11-09 | 0d | 36.12d |  |
| 67 | 1.4 | **Seguimiento** |  | 2.25d | 2020-12-14 | 2021-01-26 |  | 2020-11-09 | 2020-11-09 | 1d | 32.12d |  |
| 68 | 1.4.1 | **Construcción de manuales** |  | 1.25d | 2020-12-14 | 2021-01-26 |  | 2020-11-09 | 2020-11-09 | 0.62d | 32.12d |  |
| 69 | 1.4.1.1 | Tecnico |  | 5h | 2020-12-14 | 2020-12-14 | 65 | 2020-11-09 | 2020-11-09 | 5h | 32.12d | 0d |
| 70 | 1.4.1.2 | Instalación |  | 5h | 2020-12-14 | 2021-01-26 | 69 | 2020-11-09 | 2020-11-09 | 5h | 32.12d | 0d |
| 71 | 1.4.2 | **Pruebas** |  | 1d | 2020-12-14 | 2021-01-26 |  | 2020-11-09 | 2020-11-09 | 0.38d | 32.12d |  |
| 72 | 1.4.2.1 | Unitarias |  | 3h | 2021-01-26 | 2021-01-26 | 70 | 2020-11-09 | 2020-11-09 | 3h | 34.5d |  |
| 73 | 1.4.2.2 | Caja Negra |  | 3h | 2020-12-14 | 2020-12-14 | 70SS | 2020-11-09 | 2020-11-09 | 3h | 35.12d |  |
| 74 | 1.4.2.3 | Caja Blanca |  | 3h | 2020-12-14 | 2020-12-14 | 70SS | 2020-11-09 | 2020-11-09 | 3h | 32.12d | 0d |

| ID | WBS | Task | Type | Duration | Start | Finish | Predecessors | Baseline start | Baseline finish | Baseline duration | Total slack | Free slack |
| --- | --- | --- | --- | --- | --- | --- | --- | --- | --- | --- | --- | --- |
| 75 | 1.4.3 | **Diagrama de Distribucion** |  | 1d | 2021-01-26 | 2021-01-26 |  | 2020-11-09 | 2020-11-09 | 1d | 34.12d |  |
| 76 | 1.4.3.1 | Diagrama de Distribución en Software |  | 8h | 2021-01-26 | 2021-01-26 | 74 | 2020-11-09 | 2020-11-09 | 8h | 34.12d |  |
| 77 | 1.4.4 | **Informe** |  | 0.62d | 2020-12-14 | 2021-01-26 |  | 2020-11-09 | 2020-11-09 | 0.62d | 32.12d |  |
| 78 | 1.4.4.1 | Migración de Datos |  | 5h | 2020-12-14 | 2021-01-26 | 74SS | 2020-11-09 | 2020-11-09 | 5h | 32.12d | 0d |
| 79 | 1.4.5 | **Plan de proyecto** |  | 1.62d | 2020-12-14 | 2021-01-26 |  | 2020-11-09 | 2020-11-09 | 1d | 32.12d |  |
| 80 | 1.4.5.1 | Plan de Instalación |  | 8h | 2021-01-26 | 2021-01-26 | 78 | 2020-11-09 | 2020-11-09 | 8h | 33.88d |  |
| 81 | 1.4.5.2 | Plan de Respaldo |  | 8h | 2020-12-14 | 2021-01-26 | 78SS | 2020-11-09 | 2020-11-09 | 8h | 34.5d |  |
| 82 | 1.4.5.3 | Plan de Migración |  | 8h | 2020-12-14 | 2021-01-26 | 78SS | 2020-11-09 | 2020-11-09 | 8h | 32.12d | 0d |
| 83 | 1.4.5.4 | FIN DE SEGUIMIENTO | milestone | 0d | 2021-01-26 | 2021-01-26 | 82 | 2020-11-09 | 2020-11-09 | 0d | 32.12d | 0d |
| 84 | 1.5 | **Desarrollo** |  | 34.38d | 2020-11-09 | 2021-01-27 |  | 2020-11-09 | 2020-11-09 | 1d | 33.38d |  |
| 85 | 1.5.1 | **Proveedores** |  | 0.62d | 2021-01-26 | 2021-01-26 |  | 2020-11-09 | 2020-11-09 | 0.62d | 32.12d |  |
| 86 | 1.5.1.1 | Cuadro Comparativo |  | 5h | 2021-01-26 | 2021-01-26 | 83 | 2020-11-09 | 2020-11-09 | 5h | 32.12d | 0d |
| 87 | 1.5.2 | **Desarrollo de Software** |  | 0.5d | 2021-01-26 | 2021-01-27 |  | 2020-11-09 | 2020-11-09 | 0.5d | 33.38d |  |
| 88 | 1.5.2.1 | Contrato |  | 4h | 2021-01-26 | 2021-01-27 | 86 | 2020-11-09 | 2020-11-09 | 4h | 33.38d |  |
| 89 | 1.5.3 | **Pruebas** |  | 34.25d | 2020-11-09 | 2021-01-27 |  | 2020-11-09 | 2020-11-09 | 1d | 33.5d |  |
| 90 | 1.5.3.1 | Documentación |  | 8h | 2021-01-26 | 2021-01-27 | 86SS | 2020-11-09 | 2020-11-09 | 8h | 32.12d | 0d |
| 91 | 1.5.3.2 | FIN DE DESARROLLO | milestone | 0d | 2020-11-09 | 2020-11-09 |  | 2020-11-09 | 2020-11-09 | 0d | 67.75d |  |
| 92 | 1.6 | **Evaluación** |  | 1.38d | 2021-01-27 | 2021-01-28 |  | 2020-11-09 | 2020-11-09 | 0.75d | 32.12d |  |
| 93 | 1.6.1 | Modelo de Calidad |  | 5h | 2021-01-27 | 2021-01-27 | 90 | 2020-11-09 | 2020-11-09 | 5h | 32.12d | 0d |
| 94 | 1.6.2 | **Contrucción de Manuales** |  | 1.25d | 2021-01-27 | 2021-01-28 |  | 2020-11-09 | 2020-11-09 | 0.62d | 32.12d |  |
| 95 | 1.6.2.1 | Usuario |  | 5h | 2021-01-27 | 2021-01-28 | 93 | 2020-11-09 | 2020-11-09 | 5h | 32.25d |  |
| 96 | 1.6.2.2 | Operación |  | 5h | 2021-01-27 | 2021-01-27 | 93SS | 2020-11-09 | 2020-11-09 | 5h | 32.12d | 0d |
| 97 | 1.6.3 | **Revision Final** |  | 0.75d | 2021-01-27 | 2021-01-28 |  | 2020-11-09 | 2020-11-09 | 0.75d | 32.12d |  |
| 98 | 1.6.3.1 | Sustentación |  | 6h | 2021-01-27 | 2021-01-28 | 96 | 2020-11-09 | 2020-11-09 | 6h | 32.12d | 0d |
| 99 | 1.6.3.2 | FIN DE EVALUACIÓN | milestone | 0d | 2021-01-27 | 2021-01-27 | 98SS | 2020-11-09 | 2020-11-09 | 0d | 32.88d |  |
| 100 | 1.7 | FIN DEL PROYECTO | milestone | 0d | 2020-11-09 | 2020-11-09 |  | 2020-11-09 | 2020-11-09 | 0d | 67.75d |  |
